How a schedule from GanttProject changed from version to version. A marks actual dates.

## Version 1 (saved 2022-06-19)

| ID | WBS | Task | Duration | Start | Finish | Predecessors | Complete |
| --- | --- | --- | --- | --- | --- | --- | --- |
| 1 | 1 | **PBV01** | 39d | 2022-05-16 | 2022-07-07 |  | 50% |
| 2 | 1.1 | **OTA Test** | 17d | 2022-06-15 | 2022-07-07 |  |  |
| 3 |  | OTA 1차 배포 TF | 17d | 2022-06-15 | 2022-07-07 |  |  |
| 4 | 1.2 | **StatusBar Battery Icon** | 21d | 2022-05-17 | 2022-06-14 |  | 100% |
| 5 |  | 영업/휴무/Navi화면/비Navi화면 Battery Icon UI작업 | 4d | 2022-05-17 | 2022-05-20 |  | 100% |
| 6 |  | Property 값과 Data 연동 | 1d | 2022-05-23 | 2022-05-23 | 5 | 100% |
| 7 |  | Gui 적용 | 1d | 2022-06-13 | 2022-06-13 | 46 | 100% |
| 8 |  | 실차 연동 Test | 1d | 2022-06-14 | 2022-06-14 | 7 | 100% |
| 9 | 1.3 | **LocaAppMeter** | 1d | 2022-05-20 | 2022-05-20 |  | 100% |
| 10 |  | Loca Loading F/W 생성 및 전달 | 1d | 2022-05-20 | 2022-05-20 |  | 100% |
| 11 | 1.4 | **DriverRegist** | 10d | 2022-05-16 | 2022-05-27 |  | 100% |
| 12 |  | Driver Regist에 Loca 추가 | 5d | 2022-05-16 | 2022-05-20 |  | 100% |
| 13 |  | Driver Regist에 Loca추가 검증기간 | 5d | 2022-05-23 | 2022-05-27 | 12 | 100% |
| 14 |  | 약관동의에서 개인정보보호방침삭제 | 3d | 2022-05-23 | 2022-05-25 |  | 100% |
| 15 |  | CashBee 추가 관련 (Ordering, 체크박스 작업) | 1d | 2022-05-26 | 2022-05-26 | 14 | 100% |
| 16 | 1.5 | **AndroidAuto** | 1d | 2022-05-23 | 2022-05-23 |  |  |
| 17 |  | 오민호 책임 요청사항 분석(Key처리) | 1d | 2022-05-23 | 2022-05-23 |  |  |
| 18 | 1.6 | **CarPlay** | 10d | 2022-06-13 | 2022-06-24 |  | 40% |
| 19 | 1.6.1 | **WBS항목 추출** | 10d | 2022-06-13 | 2022-06-24 |  | 40% |
| 20 | 1.6.1.1 | **Launcher** | 4d | 2022-06-13 | 2022-06-16 |  | 100% |
| 21 |  | [Launcher] CarPlay variant에 따라 아이콘 출력 | 1d | 2022-06-13 | 2022-06-13 |  | 100% |
| 22 |  | [Device Connection Settings] CarPlay 연결 상태에 따른 Icon Activation | 1d | 2022-06-14 | 2022-06-14 | 21 | 100% |
| 23 |  | CarPlay 미연결 상태에서 CarPlay Icon 선택시 Popup | 1d | 2022-06-15 | 2022-06-15 | 22 | 100% |
| 24 |  | CarPlay연결 상태에서 CarPlay Icon 선택시 CarPlay화면으로 전환 | 1d | 2022-06-16 | 2022-06-16 | 23 | 100% |
| 25 | 1.6.1.2 | **Device Connection Setting** | 6d | 2022-06-17 | 2022-06-24 |  |  |
| 26 |  | After CarPlay Connected, Add Device in Device list | 1d | 2022-06-17 | 2022-06-17 | 24 |  |
| 27 |  | Display CarPlay Icon in Device List Item | 1d | 2022-06-20 | 2022-06-20 | 26 |  |
| 28 |  | Icon Dimming according to connection | 1d | 2022-06-21 | 2022-06-21 | 27 |  |
| 29 |  | Store/Delete CarPlay Device info | 1d | 2022-06-22 | 2022-06-22 | 28 |  |
| 30 |  | Show error popup during connecting | 1d | 2022-06-23 | 2022-06-23 | 29 |  |
| 31 |  | Show wireless connection popup when it disconnected | 1d | 2022-06-24 | 2022-06-24 | 30 |  |
| 32 | 1.7 | **Kakao Call 배차** | 1d | 2022-06-08 | 2022-06-08 |  |  |
| 33 |  | MapAudioFocus 처리 | 1d | 2022-06-08 | 2022-06-08 |  |  |
| 34 | 2 | **TSD01** | 2d | 2022-06-13 | 2022-06-14 |  |  |
| 35 |  | Cinemo Demo App 제작(like 자연의소리) | 2d | 2022-06-13 | 2022-06-14 |  |  |
| 36 | 3 | **TATA** | 30d | 2022-05-23 | 2022-07-01 |  | 58% |
| 37 | 3.1 | **Apply TATA GUI (3 weeks)** | 15d | 2022-05-23 | 2022-06-10 |  | 93% |
| 38 |  | [UI변경] Radio | 8d | 2022-05-23 | 2022-06-01 |  | 100% |
| 39 |  | [UI변경] MediaHome | 8d | 2022-05-25 | 2022-06-03 |  | 100% |
| 40 |  | [UI변경] AllMenu | 10d | 2022-05-23 | 2022-06-03 |  | 95% |
| 41 |  | [UI변경] Update_v2 | 4d | 2022-05-23 | 2022-05-26 |  | 100% |
| 42 |  | [UI변경] MtxIME | 6d | 2022-05-27 | 2022-06-03 | 41 | 100% |
| 43 |  | [UI변경] MtxCamera | 2d | 2022-06-06 | 2022-06-07 | 42 |  |
| 44 |  | [UI변경] MtxSettings | 10d | 2022-05-23 | 2022-06-03 |  | 80% |
| 45 |  | [UI변경] BTMusic | 4d | 2022-06-06 | 2022-06-09 | 44 | 90% |
| 46 |  | [SystemUI변경] BTMusic Split Widget | 1d | 2022-06-10 | 2022-06-10 | 45 | 100% |
| 47 |  | [UI변경] MusicPlayer | 5d | 2022-05-23 | 2022-05-27 |  | 100% |
| 48 |  | [UI변경] VideoPlayer | 5d | 2022-05-30 | 2022-06-03 | 47 | 100% |
| 49 |  | [UI변경] Video 내부 Setting | 4d | 2022-06-06 | 2022-06-09 | 48 | 100% |
| 50 |  | [SystemUI변경] USB Player Split Widget | 1d | 2022-06-10 | 2022-06-10 | 49 | 100% |
| 51 |  | [UI변경] BTPhone | 8d | 2022-05-23 | 2022-06-01 |  | 90% |
| 52 |  | [UI변경] ConnSetting | 5d | 2022-06-02 | 2022-06-08 | 51 | 100% |
| 53 |  | [SystemUI변경] BTCall관련 SplitWidget | 2d | 2022-06-09 | 2022-06-10 | 52 | 100% |
| 54 | 3.2 | **TATA 잔여** | 13d | 2022-06-15 | 2022-07-01 |  |  |
| 55 |  | List 한글 스크롤 | 5d | 2022-06-15 | 2022-06-21 |  |  |
| 56 | 3.2.2 | **BT Phone** | 9d | 2022-06-15 | 2022-06-27 |  |  |
| 57 |  | BTPhone SWRC 동작 시 layout 변경 작업 | 1d | 2022-06-15 | 2022-06-15 |  |  |
| 58 |  | BTPhone List의 한글 인덱스 스크롤 | 4d | 2022-06-22 | 2022-06-27 | 55 |  |
| 59 |  | BTPhone message layout 변경 작업 | 2d | 2022-06-16 | 2022-06-17 | 57 |  |
| 60 |  | 다국어(한글 번역 되어있지 않은 문구 변경) | 1d | 2022-06-20 | 2022-06-20 | 59 |  |
| 61 | 3.2.3 | **BT Music** | 4d | 2022-06-22 | 2022-06-27 |  |  |
| 62 |  | BT Music의 Device change | 1d | 2022-06-23 | 2022-06-23 | 69 |  |
| 63 |  | BT Music List의 한글 인덱스 스크롤 | 4d | 2022-06-22 | 2022-06-27 | 55 |  |
| 64 | 3.2.4 | **Setting** | 6d | 2022-06-15 | 2022-06-22 |  |  |
| 65 |  | 다국어 | 1d | 2022-06-15 | 2022-06-15 |  |  |
| 66 |  | Delete unsupported Menu | 1d | 2022-06-16 | 2022-06-16 | 65 |  |
| 67 |  | General Setting >> Alarm | 1d | 2022-06-17 | 2022-06-17 | 66 |  |
| 68 |  | Media Sound Effects Button | 2d | 2022-06-20 | 2022-06-21 | 67 |  |
| 69 |  | 초기화 | 1d | 2022-06-22 | 2022-06-22 | 68 |  |
| 70 | 3.2.5 | **Keyboard** | 3d | 2022-06-21 | 2022-06-23 |  |  |

| ID | WBS | Task | Duration | Start | Finish | Predecessors |
| --- | --- | --- | --- | --- | --- | --- |
| 71 |  | EU | 1d | 2022-06-21 | 2022-06-21 | 60 |
| 72 |  | AU | 1d | 2022-06-22 | 2022-06-22 | 71 |
| 73 |  | 한글 | 1d | 2022-06-23 | 2022-06-23 | 72 |
| 74 |  | 딜러모드에 UUID 입력기능 추가 | 1d | 2022-06-24 | 2022-06-24 | 73 |
| 75 | 3.2.7 | **USB Music** | 4d | 2022-06-15 | 2022-06-20 |  |
| 76 |  | 음장버튼 추가 및 기능 구현 | 1d | 2022-06-15 | 2022-06-15 |  |
| 77 |  | 한글 인덱스 스크롤 추가 | 3d | 2022-06-16 | 2022-06-20 | 76 |
| 78 | 3.2.8 | **USB Video** | 6d | 2022-06-21 | 2022-06-28 |  |
| 79 |  | Change Audio 기능 확인 (미구현일 시 기능 구현) | 3d | 2022-06-21 | 2022-06-23 | 77 |
| 80 |  | USB Video >> Display Setting 사양에서 삭제된 탭 제거 | 1d | 2022-06-24 | 2022-06-24 | 79 |
| 81 |  | USB Video >> Display Setting 화면밝기 탭에 사양에서 삭제된 기능 제거 | 1d | 2022-06-27 | 2022-06-27 | 80 |
| 82 |  | USB Video >> Display Setting 우측 이미지 제거 | 1d | 2022-06-28 | 2022-06-28 | 81 |
| 83 | 3.2.9 | **Update** | 10d | 2022-06-20 | 2022-07-01 |  |
| 84 |  | Quick update General update | 1d | 2022-06-20 | 2022-06-20 |  |
| 85 |  | SW Update General Update | 1d | 2022-06-21 | 2022-06-21 | 84 |
| 86 |  | SW Update NAVI Failed | 1d | 2022-06-22 | 2022-06-22 | 85 |
| 87 |  | SW Update Reserved Update | 4d | 2022-06-23 | 2022-06-28 | 86 |
| 88 |  | SW Update Canceled | 1d | 2022-06-29 | 2022-06-29 | 87 |
| 89 |  | SW Update General Update > Error | 1d | 2022-06-30 | 2022-06-30 | 88 |
| 90 |  | SW Update > Quick Update > Error | 1d | 2022-07-01 | 2022-07-01 | 89 |
| 91 |  | All Menu_wbs작성 | 1d | 2022-06-20 | 2022-06-20 |  |

## Version 2 (saved 2022-06-30)

Last finish 2022-07-07 → 2022-07-08 (+1d). Complete tasks 24 → 49.

Added:

| ID | Task | Duration | Start | Finish |
| --- | --- | --- | --- | --- |
| 70 | 신규 이미지 적용 및 Manual 메뉴적용 | 1d | 2022-07-05 | 2022-07-05 |

Changed:

| ID | Task | Start | Finish | Duration | Complete | Predecessors | Other |
| --- | --- | --- | --- | --- | --- | --- | --- |
| 1 | **PBV01** |  |  |  | 50% → 62% |  |  |
| 18 | **CarPlay** |  |  |  | 40% → 100% |  |  |
| 19 | **WBS항목 추출** |  |  |  | 40% → 100% |  |  |
| 25 | **Device Connection Setting** |  |  |  | 0% → 100% |  |  |
| 26 | After CarPlay Connected, Add Device in Device list |  |  |  | 0% → 100% |  |  |
| 27 | Display CarPlay Icon in Device List Item |  |  |  | 0% → 100% |  |  |
| 28 | Icon Dimming according to connection |  |  |  | 0% → 100% |  |  |
| 29 | Store/Delete CarPlay Device info |  |  |  | 0% → 100% |  |  |
| 30 | Show error popup during connecting |  |  |  | 0% → 100% |  |  |
| 31 | Show wireless connection popup when it disconnected |  |  |  | 0% → 100% |  |  |
| 36 | **TATA** |  | 2022-07-01 → 2022-07-08 (+7d) | 30d → 35d | 58% → 84% |  |  |
| 54 | **TATA 잔여** |  | 2022-07-01 → 2022-07-08 (+7d) | 13d → 18d | 0% → 74% |  |  |
| 56 | **BT Phone** |  | 2022-06-27 → 2022-07-05 (+8d) | 9d → 15d | 0% → 96% |  |  |
| 57 | BTPhone SWRC 동작 시 layout 변경 작업 |  |  |  | 0% → 100% |  |  |
| 58 | BTPhone List의 한글 인덱스 스크롤 |  |  |  | 0% → 100% |  |  |
| 59 | BTPhone message layout 변경 작업 |  | 2022-06-17 → 2022-07-05 (+18d) | 2d → 14d | 0% → 95% |  |  |
| 60 | 다국어(한글 번역 되어있지 않은 문구 변경) |  |  |  | 0% → 100% | 59 → none |  |
| 61 | **BT Music** |  |  |  | 0% → 100% |  |  |
| 62 | BT Music의 Device change |  |  |  | 0% → 100% |  |  |
| 63 | BT Music List의 한글 인덱스 스크롤 |  |  |  | 0% → 100% |  |  |
| 64 | **Setting** |  | 2022-06-22 → 2022-07-05 (+13d) | 6d → 15d | 0% → 85% |  |  |
| 65 | 다국어 |  |  |  | 0% → 100% |  |  |
| 66 | Delete unsupported Menu |  |  |  | 0% → 100% |  |  |
| 67 | General Setting >> Alarm |  |  |  | 0% → 100% |  |  |
| 68 | Media Sound Effects Button |  |  |  | 0% → 100% |  |  |
| 69 | 초기화 |  |  |  | 0% → 100% |  |  |
| 71 | **Keyboard** |  | 2022-06-23 → 2022-07-08 (+15d) | 3d → 14d | 0% → 95% |  |  |
| 72 | EU |  |  |  | 0% → 100% |  |  |
| 73 | AU |  |  |  | 0% → 100% |  |  |
| 74 | 한글 |  | 2022-06-23 → 2022-07-08 (+15d) | 1d → 12d | 0% → 95% |  |  |
| 75 | 딜러모드에 UUID 입력기능 추가 |  |  |  | 0% → 100% | 74 → none |  |
| 76 | **USB Music** |  |  |  | 0% → 100% |  |  |
| 77 | 음장버튼 추가 및 기능 구현 |  |  |  | 0% → 100% |  |  |
| 78 | 한글 인덱스 스크롤 추가 |  |  |  | 0% → 100% |  |  |
| 79 | **USB Video** |  | 2022-06-28 → 2022-07-05 (+7d) | 6d → 11d | 0% → 83% |  |  |
| 80 | Change Audio 기능 확인 (미구현일 시 기능 구현) |  |  |  | 0% → 100% |  |  |
| 81 | USB Video >> Display Setting 사양에서 삭제된 탭 제거 |  |  |  | 0% → 100% |  |  |
| 82 | USB Video >> Display Setting 화면밝기 탭에 사양에서 삭제된 기능 제거 |  |  |  | 0% → 100% |  |  |
| 83 | USB Video >> Display Setting 우측 이미지 제거 | 2022-06-28 → 2022-07-05 (+7d) | 2022-06-28 → 2022-07-05 (+7d) |  |  | 82 → none |  |
| 92 | All Menu |  |  |  | 0% → 100% |  | was named All Menu_wbs작성 |
